# 施工进度

Schedule from a web Gantt chart, 2025-07-02 to 2025-10-30.
Every day is a working day

## Schedule

| ID | WBS | Task | Duration | Start | Finish |
| --- | --- | --- | --- | --- | --- |
| 2 | 1 | **现场准备、深化设计、交底、临时设施、防水** | 31d | 2025-07-02 | 2025-08-01 |
| 3 | 1.1 | 交付团队入场、项目启动会 | 4d | 2025-07-29 | 2025-08-01 |
| 4 | 1.2 | 深化设计、设计交底、图纸会审 | 10d | 2025-07-23 | 2025-08-01 |
| 5 | 1.3 | 技术、安全交底 | 1d | 2025-07-02 | 2025-07-02 |
| 7 | 2 | 主要设备/材料到货计划 | 47d | 2025-08-06 | 2025-09-21 |
| 8 | 3 | 机房施工 | 31d | 2025-09-15 | 2025-10-15 |
| 9 | 4 | 测试验收 | 16d | 2025-10-15 | 2025-10-30 |
